# 99 — Milestones
#
# Zero-duration milestones marking when major capability is in place; each
# depends on the work that has to exist first.

task milestones "Milestones" {
  task m0_bootstrap "M0: Bootstrap" {
    milestone
    complete 100
    depends bootstrap.walking_skeleton
    note "Design docs 00-17, gate + CI, and the walking skeleton golden test all in place."
  }

  task m1_memory "M1: Memory foundation" {
    milestone
    complete 100
    depends pool.checkpoints, pool.crash_tests, pool.benchmarks
    note "Slab arenas with deferred reclamation and the mmapped workspace file surviving kill-injection sweeps. Doc 15 realized."
  }

  task m2_editing "M2: Versioned editing" {
    milestone
    complete 100
    depends model.journal, model.editable_facet, model.composition_membership, quality.stress_harness, runtime.housekeeping, runtime.housekeeping_thread, pool.refcounts_in_store, pool.free_pools
    note "Transactions, cross-kind undo/redo, Editable capture/restore, lock-free pins under stress. Doc 14 realized."
  }

  task m3_still_compositor "M3: Interactive still compositor" {
    milestone
    complete 100
    depends compositor.damage_planning, compositor.temporal_coalescing, compositor.anchored_viewports, compositor.refinement, compositor.counters, runtime.interactive, kinds.raster, color.kernel_goldens
    note "Pan/zoom at frame rate over mixed solid/raster scenes: tile cache, scale ladder, damage-driven frames, progressive refinement, deep-zoom rebasing. Docs 02/04 realized for stills."
  }

  task m4_recursion "M4: Recursive composition" {
    milestone
    complete 100
    depends kinds.nested, compositor.operator_graph, compositor.expose_visible_plan
    note "Compositions embed compositions through PullService with two-level caching and cycle termination. Doc 05 realized."
  }

  task m5_video "M5: Video" {
    milestone
    complete 100
    depends timeline.transport, timeline.temporal_cache, timeline.playback_hints, kinds.imageseq_plugin, runtime.offline_sequences, surfaces.provided_surfaces, compositor.temporal_placement_culling
    note "Timeline, spans, transport, achieved_time coalescing, playback hints, image-sequence playback (content-provided surfaces exercised), and offline frame sequences. Doc 11 realized."
  }

  task m6_audio "M6: Audio" {
    milestone
    complete 100
    depends audio.device_monitor, audio.device_edge_resample, audio.device_edge_decimation, audio.seek_drain_realign, audio.export_monitor, audio.export_edge_resample, audio.rt_safety, audio.latency, audio.spatial_policy, audio.lookahead_recursive_prefetch, kinds.tone, contract.audio_conformance, kinds.nested_audio, kinds.nested_audio_resampling, audio.spatial_fill_cull, audio.spatial_camera_follow, audio.spatial_nested_warm_context, audio.spatial_blockkey_disambiguation
    note "Glitch-free device playback mastering the transport clock, sample-exact export, RT-safety enforced by build. Doc 12 realized."
  }

  task m7_effects "M7: Effects" {
    milestone
    complete 100
    depends operators.fade, operators.crossfade, operators.operator_conformance, serialize.sharing
    note "Fade and crossfade over both facets with identity pass-through; operator graphs serialize. Doc 13 realized — cuts-and-dissolves editing works end to end."
  }

  task m8_persistence "M8: Documents as files" {
    milestone
    complete 100
    depends serialize.format_tests, runtime.plugin_loading, model.workspace_backing, runtime.document_serialize, runtime.operator_codecs, serialize.unknown_field_preservation, serialize.compositions_table, runtime.nested_codec, runtime.nested_external_ref
    note "Canonical .arbc round-trips with unknown-kind and every-tier unknown-field preservation; nested compositions round-trip in-document (compositions table, Droste included); external nested projects load; plugins load by path. Docs 05/08 realized."
  }

  task m9_release "M9: v0.1 release" {
    milestone
    depends packaging.release_01, packaging.plugin_helper, quality.testing_artifact, quality.tidy_promotion, quality.benchmark_history, quality.claims_audit, quality.repo_linters, quality.request_fuzz, kinds.dual_build, surfaces.import, surfaces.stub_backend_test_doubles, pool.mmap_backing_win32, pool.checkpoints_win32, pool.crash_tests_win32, pool.concurrent_pin_benchmark, kinds.raster_resampling_quality, kinds.raster_runtime_binding, kinds.raster_pool_backing, pool.big_block_pool, kinds.nested_working_space_conversion, kinds.nested_runtime_binding, operators.fade_runtime_binding, operators.crossfade_runtime_binding, runtime.operator_input_cache_identity, runtime.operator_identity_offline_delivery, runtime.plugin_loading_win32, runtime.plugin_default_search_paths, compositor.pull_multi_tile_region, runtime.damage_router, runtime.housekeeping_win32, audio.interactive_pull_identity, runtime.interactive_pull_wiring, runtime.interactive_binder_wiring, runtime.worker_dispatch_leaf_only, runtime.housekeeping_document_wiring, runtime.editable_sink_multiplex, color.resample_filter_quality, packaging.shared_library_build, runtime.plugin_operator_registration, runtime.async_external_load, compositor.root_composition_frame_walk, kinds.nested_temporal_mapping, pool.header_writeback_ordering, runtime.registry_bootstrap, audio.seek_subblock, audio.export_layout_conversion, model.content_removal
    note "The single library + arbc-testing + imageseq plugin, installable with package metadata, examples building, quality bars promoted, external-import surface contract complete. Includes the composition-scoped visual walk (nested double-draw) and the nested visual span/time_map descent — both correctness gaps, not polish."
  }
}
